# Children's Book Schedule

How a schedule from MS Project changed from version to version. A marks actual dates.

## Version 1 (saved 2021-07-19, file TrackWork.mpp)

Note of the change: README actualizado, companion files añadido

| ID | WBS | Task | Duration | Start | Finish | Predecessors | Complete | Total float | Constraint |
| --- | --- | --- | --- | --- | --- | --- | --- | --- | --- |
| 1 | 1 | **Editorial staff meeting** | 60.12d | 2025-04-14 08:00 A | 2025-07-07 09:00 |  | 15% | 108.75d |  |
| 2 |  | Editorial staff meeting 1 | 1h | 2025-04-14 08:00 A | 2025-04-14 09:00 A |  | 100% |  | start no earlier than 2025-04-14 08:00 |
| 3 |  | Editorial staff meeting 2 | 1h | 2025-04-21 08:00 A | 2025-04-21 09:00 A |  | 100% |  | start no earlier than 2025-04-21 08:00 |
| 4 |  | Editorial staff meeting 3 | 1h | 2025-04-28 08:00 | 2025-04-28 09:00 |  |  | 158.75d | start no earlier than 2025-04-28 08:00 |
| 5 |  | Editorial staff meeting 4 | 1h | 2025-05-05 08:00 | 2025-05-05 09:00 |  |  | 153.75d | start no earlier than 2025-05-05 08:00 |
| 6 |  | Editorial staff meeting 5 | 1h | 2025-05-12 08:00 | 2025-05-12 09:00 |  |  | 148.75d | start no earlier than 2025-05-12 08:00 |
| 7 |  | Editorial staff meeting 6 | 1h | 2025-05-19 08:00 | 2025-05-19 09:00 |  |  | 143.75d | start no earlier than 2025-05-19 08:00 |
| 8 |  | Editorial staff meeting 7 | 1h | 2025-05-26 08:00 | 2025-05-26 09:00 |  |  | 138.75d | start no earlier than 2025-05-26 08:00 |
| 9 |  | Editorial staff meeting 8 | 1h | 2025-06-02 08:00 | 2025-06-02 09:00 |  |  | 133.75d | start no earlier than 2025-06-02 08:00 |
| 10 |  | Editorial staff meeting 9 | 1h | 2025-06-09 08:00 | 2025-06-09 09:00 |  |  | 128.75d | start no earlier than 2025-06-09 08:00 |
| 11 |  | Editorial staff meeting 10 | 1h | 2025-06-16 08:00 | 2025-06-16 09:00 |  |  | 123.75d | start no earlier than 2025-06-16 08:00 |
| 12 |  | Editorial staff meeting 11 | 1h | 2025-06-23 08:00 | 2025-06-23 09:00 |  |  | 118.75d | start no earlier than 2025-06-23 08:00 |
| 13 |  | Editorial staff meeting 12 | 1h | 2025-06-30 08:00 | 2025-06-30 09:00 |  |  | 113.75d | start no earlier than 2025-06-30 08:00 |
| 14 |  | Editorial staff meeting 13 | 1h | 2025-07-07 08:00 | 2025-07-07 09:00 |  |  | 108.75d | start no earlier than 2025-07-07 08:00 |
| 15 | 2 | **Acquisition** | 35.5d | 2025-04-14 08:00 A | 2025-06-02 12:00 |  | 40% | 0d |  |
| 16 |  | Manuscript received | 0d | 2025-04-14 08:00 A | 2025-04-14 08:00 A |  | 100% |  |  |
| 17 |  | Content edit | 15d | 2025-04-14 08:00 A | 2025-05-08 10:00 A | 16 | 100% |  |  |
| 18 |  | Original art review | 10.25d | 2025-05-01 10:00 | 2025-05-15 12:00 | 17FS-5d |  | 0d |  |
| 19 |  | Author review of content edit | 12d | 2025-05-15 13:00 | 2025-06-02 12:00 | 17, 18 |  | 0d |  |
| 20 |  | Handoff to Editorial | 0d | 2025-06-02 12:00 | 2025-06-02 12:00 | 19 |  | 0d |  |
| 21 | 3 | **Editorial** | 29.12d | 2025-06-02 13:00 | 2025-07-11 14:00 | 15 |  | 0d |  |
| 22 |  | Organize manuscript for copyedit | 5.12d | 2025-06-02 13:00 | 2025-06-09 14:00 |  |  | 0d |  |
| 23 |  | Copyedit | 11.25d | 2025-06-09 14:00 | 2025-06-24 16:00 | 22 |  | 0d |  |
| 24 |  | Author review of copyedit | 10d | 2025-06-24 16:00 | 2025-07-08 16:00 | 23 |  | 0d |  |
| 25 |  | Copyedit incorp | 5.12d | 2025-07-04 11:00 | 2025-07-11 14:00 | 24FS-2.5% |  | 0d |  |
| 26 |  | Handoff to Production | 0d | 2025-07-11 14:00 | 2025-07-11 14:00 | 25 |  | 0d |  |
| 27 | 4 | **Design and Production** | 58.25d | 2025-07-11 14:00 | 2025-10-01 16:00 | 21 |  | 0d |  |
| 28 |  | Set pages | 15d | 2025-07-11 14:00 | 2025-08-01 14:00 |  |  | 0d |  |
| 29 |  | Interior illustration design | 15.25d | 2025-07-11 14:00 | 2025-08-01 16:00 | 28SS |  | 0d |  |
| 30 | 4.3 | **1st Pages review** | 30d | 2025-08-01 16:00 | 2025-09-12 16:00 | 29 |  | 0d |  |
| 31 |  | Proofread and index | 10d | 2025-08-01 16:00 | 2025-08-15 16:00 |  |  | 0d | start no earlier than 2025-07-21 08:00 |
| 32 |  | Incorporate 1st Pages review | 10d | 2025-08-15 16:00 | 2025-08-29 16:00 | 31 |  | 0d |  |
| 33 |  | Send proofed pages to Production | 0d | 2025-08-29 16:00 | 2025-08-29 16:00 | 32 |  | 0d |  |
| 34 |  | Enter page corrections and index | 5d | 2025-08-29 16:00 | 2025-09-05 16:00 | 33 |  | 0d |  |
| 35 |  | Cover design | 5d | 2025-09-05 16:00 | 2025-09-12 16:00 | 34 |  | 0d |  |
| 36 | 4.4 | **2nd Pages review** | 13d | 2025-09-12 16:00 | 2025-10-01 16:00 |  |  | 0d |  |
| 37 |  | Proof and review | 6.5d | 2025-09-12 16:00 | 2025-09-23 11:00 | 35 |  | 0d |  |
| 38 |  | Send proofed pages to Production | 0d | 2025-09-23 11:00 | 2025-09-23 11:00 | 37 |  | 0d |  |
| 39 |  | Final review | 5d | 2025-09-24 16:00 | 2025-10-01 16:00 | 38 |  | 0d |  |
| 40 | 4.5 | **Design book's companion website** | 10d | 2025-09-12 16:00 | 2025-09-26 16:00 | 30 |  | 3d |  |
| 41 |  | Create mockup | 4.5d | 2025-09-12 16:00 | 2025-09-24 16:00 |  |  | 3d |  |
| 42 |  | Review with author | 2d | 2025-09-24 16:00 | 2025-09-26 16:00 | 41 |  | 3d |  |
| 43 | 5 | **Color prep and printing** | 46d | 2025-10-01 16:00 | 2025-12-04 16:00 | 40 |  | 0d |  |
| 44 |  | Send to color house | 1d | 2025-10-01 16:00 | 2025-10-06 16:00 | 36 |  | 0d |  |
| 45 |  | Generate proofs | 10d | 2025-10-06 16:00 | 2025-10-20 16:00 | 44 |  | 0d |  |
| 46 |  | Print and ship | 30d | 2025-10-23 16:00 | 2025-12-04 16:00 | 45FS+3d |  | 0d |  |
| 47 | 6 | **Book launch prep** | 22d | 2025-10-06 16:00 | 2025-11-05 16:00 |  |  | 21d |  |
| 48 |  | Launch planning | 5d | 2025-10-06 16:00 | 2025-10-13 16:00 | 44 |  | 21d |  |
| 49 |  | Assign launch team members | 1d | 2025-10-13 16:00 | 2025-10-14 16:00 | 48 |  | 21d |  |
| 50 |  | Complete author questionnaire | 5d | 2025-10-14 16:00 | 2025-10-21 16:00 | 49 |  | 21d |  |
| 51 |  | Schedule author interviews | 1d | 2025-10-21 16:00 | 2025-10-22 16:00 | 50 |  | 21d |  |
| 52 |  | Design and order marketing material | 10d | 2025-10-22 16:00 | 2025-11-05 16:00 | 51 |  | 21d |  |

## Version 2 (saved 2021-07-19, file UpdateBaseline.mpp)

Note of the change: README actualizado, companion files añadido

Last finish stays 2025-12-04. Complete tasks 4 → 0.

Changed:

| ID | Task | Start | Finish | Complete | Total float | Other |
| --- | --- | --- | --- | --- | --- | --- |
| 1 | **Editorial staff meeting** | 2025-04-14 08:00 A → 2025-04-14 08:00 |  | 15% → 0% |  |  |
| 2 | Editorial staff meeting 1 | 2025-04-14 08:00 A → 2025-04-14 08:00 | 2025-04-14 09:00 A → 2025-04-14 09:00 | 100% → 0% | none → 168.75d |  |
| 3 | Editorial staff meeting 2 | 2025-04-21 08:00 A → 2025-04-21 08:00 | 2025-04-21 09:00 A → 2025-04-21 09:00 | 100% → 0% | none → 163.75d |  |
| 15 | **Acquisition** | 2025-04-14 08:00 A → 2025-04-14 08:00 |  | 40% → 0% |  | baseline finish 2025-06-02 12:00 → 2025-05-26 10:00 |
| 16 | Manuscript received | 2025-04-14 08:00 A → 2025-04-14 08:00 | 2025-04-14 08:00 A → 2025-04-14 08:00 | 100% → 0% | none → 0d |  |
| 17 | Content edit | 2025-04-14 08:00 A → 2025-04-14 08:00 | 2025-05-08 10:00 A → 2025-05-08 10:00 | 100% → 0% | none → 0d |  |
| 18 | Original art review |  |  |  |  | baseline start 2025-05-01 10:00 → none; baseline finish 2025-05-15 12:00 → none |
| 19 | Author review of content edit |  |  |  |  | baseline start 2025-05-15 13:00 → 2025-05-08 10:00; baseline finish 2025-06-02 12:00 → 2025-05-26 10:00 |
| 20 | Handoff to Editorial |  |  |  |  | baseline start 2025-06-02 12:00 → 2025-05-26 10:00; baseline finish 2025-06-02 12:00 → 2025-05-26 10:00 |
| 21 | **Editorial** |  |  |  |  | baseline start 2025-06-02 13:00 → 2025-05-26 10:00; baseline finish 2025-07-11 14:00 → 2025-07-04 11:00 |
| 22 | Organize manuscript for copyedit |  |  |  |  | baseline start 2025-06-02 13:00 → 2025-05-26 10:00; baseline finish 2025-06-09 14:00 → 2025-06-02 11:00 |
| 23 | Copyedit |  |  |  |  | baseline start 2025-06-09 14:00 → 2025-06-02 11:00; baseline finish 2025-06-24 16:00 → 2025-06-17 14:00 |
| 24 | Author review of copyedit |  |  |  |  | baseline start 2025-06-24 16:00 → 2025-06-17 14:00; baseline finish 2025-07-08 16:00 → 2025-07-01 14:00 |
| 25 | Copyedit incorp |  |  |  |  | baseline start 2025-07-04 11:00 → 2025-06-27 09:00; baseline finish 2025-07-11 14:00 → 2025-07-04 11:00 |
| 26 | Handoff to Production |  |  |  |  | baseline start 2025-07-11 14:00 → 2025-07-04 11:00; baseline finish 2025-07-11 14:00 → 2025-07-04 11:00 |
| 27 | **Design and Production** |  |  |  |  | baseline start 2025-07-11 14:00 → 2025-07-04 11:00; baseline finish 2025-10-01 16:00 → 2025-09-24 14:00 |
| 28 | Set pages |  |  |  |  | baseline start 2025-07-11 14:00 → 2025-07-04 11:00; baseline finish 2025-08-01 14:00 → 2025-07-25 11:00 |
| 29 | Interior illustration design |  |  |  |  | baseline start 2025-07-11 14:00 → 2025-07-04 11:00; baseline finish 2025-08-01 16:00 → 2025-07-25 14:00 |
| 30 | **1st Pages review** |  |  |  |  | baseline start 2025-08-01 16:00 → 2025-07-25 14:00; baseline finish 2025-09-12 16:00 → 2025-09-05 14:00 |
| 31 | Proofread and index |  |  |  |  | baseline start 2025-08-01 16:00 → 2025-07-25 14:00; baseline finish 2025-08-15 16:00 → 2025-08-08 14:00 |
| 32 | Incorporate 1st Pages review |  |  |  |  | baseline start 2025-08-15 16:00 → 2025-08-08 14:00; baseline finish 2025-08-29 16:00 → 2025-08-22 14:00 |
| 33 | Send proofed pages to Production |  |  |  |  | baseline start 2025-08-29 16:00 → 2025-08-22 14:00; baseline finish 2025-08-29 16:00 → 2025-08-22 14:00 |
| 34 | Enter page corrections and index |  |  |  |  | baseline start 2025-08-29 16:00 → 2025-08-22 14:00; baseline finish 2025-09-05 16:00 → 2025-08-29 14:00 |
| 35 | Cover design |  |  |  |  | baseline start 2025-09-05 16:00 → 2025-08-29 14:00; baseline finish 2025-09-12 16:00 → 2025-09-05 14:00 |
| 36 | **2nd Pages review** |  |  |  |  | baseline start 2025-09-12 16:00 → 2025-09-05 14:00; baseline finish 2025-10-01 16:00 → 2025-09-24 14:00 |
| 37 | Proof and review |  |  |  |  | baseline start 2025-09-12 16:00 → 2025-09-05 14:00; baseline finish 2025-09-23 11:00 → 2025-09-16 09:00 |
| 38 | Send proofed pages to Production |  |  |  |  | baseline start 2025-09-23 11:00 → 2025-09-16 09:00; baseline finish 2025-09-23 11:00 → 2025-09-16 09:00 |
| 39 | Final review |  |  |  |  | baseline start 2025-09-24 16:00 → 2025-09-17 14:00; baseline finish 2025-10-01 16:00 → 2025-09-24 14:00 |
| 40 | **Design book's companion website** |  |  |  |  | baseline start 2025-09-12 16:00 → 2025-09-05 14:00; baseline finish 2025-09-26 16:00 → 2025-09-19 14:00 |
| 41 | Create mockup |  |  |  |  | baseline start 2025-09-12 16:00 → 2025-09-05 14:00; baseline finish 2025-09-24 16:00 → 2025-09-17 14:00 |
| 42 | Review with author |  |  |  |  | baseline start 2025-09-24 16:00 → 2025-09-17 14:00; baseline finish 2025-09-26 16:00 → 2025-09-19 14:00 |
| 43 | **Color prep and printing** |  |  |  |  | baseline start 2025-10-01 16:00 → 2025-09-24 14:00; baseline finish 2025-12-04 16:00 → 2025-11-27 14:00 |
| 44 | Send to color house |  |  |  |  | baseline start 2025-10-01 16:00 → 2025-09-24 14:00; baseline finish 2025-10-06 16:00 → 2025-09-29 14:00 |
| 45 | Generate proofs |  |  |  |  | baseline start 2025-10-06 16:00 → 2025-09-29 14:00; baseline finish 2025-10-20 16:00 → 2025-10-13 14:00 |
| 46 | Print and ship |  |  |  |  | baseline start 2025-10-23 16:00 → 2025-10-16 14:00; baseline finish 2025-12-04 16:00 → 2025-11-27 14:00 |
| 47 | **Book launch prep** |  |  |  |  | baseline start 2025-10-06 16:00 → 2025-09-29 14:00; baseline finish 2025-11-05 16:00 → 2025-10-29 14:00 |
| 48 | Launch planning |  |  |  |  | baseline start 2025-10-06 16:00 → 2025-09-29 14:00; baseline finish 2025-10-13 16:00 → 2025-10-06 14:00 |
| 49 | Assign launch team members |  |  |  |  | baseline start 2025-10-13 16:00 → 2025-10-06 14:00; baseline finish 2025-10-14 16:00 → 2025-10-07 14:00 |
| 50 | Complete author questionnaire |  |  |  |  | baseline start 2025-10-14 16:00 → 2025-10-07 14:00; baseline finish 2025-10-21 16:00 → 2025-10-14 14:00 |
| 51 | Schedule author interviews |  |  |  |  | baseline start 2025-10-21 16:00 → 2025-10-14 14:00; baseline finish 2025-10-22 16:00 → 2025-10-15 14:00 |
| 52 | Design and order marketing material |  |  |  |  | baseline start 2025-10-22 16:00 → 2025-10-15 14:00; baseline finish 2025-11-05 16:00 → 2025-10-29 14:00 |

## Version 3 (saved 2021-07-19, file TrackTimephasedWork.mpp)

Note of the change: README actualizado, companion files añadido

Last finish stays 2025-12-04. Complete tasks 0 → 10.

Changed:

| ID | Task | Start | Finish | Duration | Complete | Total float | Other |
| --- | --- | --- | --- | --- | --- | --- | --- |
| 1 | **Editorial staff meeting** | 2025-04-14 08:00 → 2025-04-21 08:00 A (+7d) | 2025-07-07 09:00 → 2025-07-14 09:00 (+7d) |  | 0% → 54% | 108.75d → 103.88d | baseline start 2025-04-14 08:00 → 2025-04-21 08:00; baseline finish 2025-07-07 09:00 → 2025-07-14 09:00 |
| 2 | Editorial staff meeting 1 | 2025-04-14 08:00 → 2025-04-21 08:00 A (+7d) | 2025-04-14 09:00 → 2025-04-21 09:00 A (+7d) |  | 0% → 100% | 168.75d → none | constraint start no earlier than 2025-04-14 08:00 → start no earlier than 2025-04-21 08:00; baseline start 2025-04-14 08:00 → 2025-04-21 08:00; baseline finish 2025-04-14 09:00 → 2025-04-21 09:00 |
| 3 | Editorial staff meeting 2 | 2025-04-21 08:00 → 2025-04-28 08:00 A (+7d) | 2025-04-21 09:00 → 2025-04-28 09:00 A (+7d) |  | 0% → 100% | 163.75d → none | constraint start no earlier than 2025-04-21 08:00 → start no earlier than 2025-04-28 08:00; baseline start 2025-04-21 08:00 → 2025-04-28 08:00; baseline finish 2025-04-21 09:00 → 2025-04-28 09:00 |
| 4 | Editorial staff meeting 3 | 2025-04-28 08:00 → 2025-05-05 08:00 A (+7d) | 2025-04-28 09:00 → 2025-05-05 09:00 A (+7d) |  | 0% → 100% | 158.75d → none | constraint start no earlier than 2025-04-28 08:00 → start no earlier than 2025-05-05 08:00; baseline start 2025-04-28 08:00 → 2025-05-05 08:00; baseline finish 2025-04-28 09:00 → 2025-05-05 09:00 |
| 5 | Editorial staff meeting 4 | 2025-05-05 08:00 → 2025-05-12 08:00 A (+7d) | 2025-05-05 09:00 → 2025-05-12 09:00 A (+7d) |  | 0% → 100% | 153.75d → none | constraint start no earlier than 2025-05-05 08:00 → start no earlier than 2025-05-12 08:00; baseline start 2025-05-05 08:00 → 2025-05-12 08:00; baseline finish 2025-05-05 09:00 → 2025-05-12 09:00 |
| 6 | Editorial staff meeting 5 | 2025-05-12 08:00 → 2025-05-19 08:00 A (+7d) | 2025-05-12 09:00 → 2025-05-19 09:00 A (+7d) |  | 0% → 100% | 148.75d → none | constraint start no earlier than 2025-05-12 08:00 → start no earlier than 2025-05-19 08:00; baseline start 2025-05-12 08:00 → 2025-05-19 08:00; baseline finish 2025-05-12 09:00 → 2025-05-19 09:00 |
| 7 | Editorial staff meeting 6 | 2025-05-19 08:00 → 2025-05-26 08:00 A (+7d) | 2025-05-19 09:00 → 2025-05-26 09:00 A (+7d) |  | 0% → 100% | 143.75d → none | constraint start no earlier than 2025-05-19 08:00 → start no earlier than 2025-05-26 08:00; baseline start 2025-05-19 08:00 → 2025-05-26 08:00; baseline finish 2025-05-19 09:00 → 2025-05-26 09:00 |
| 8 | Editorial staff meeting 7 | 2025-05-26 08:00 → 2025-06-02 08:00 A (+7d) | 2025-05-26 09:00 → 2025-06-02 09:00 A (+7d) |  | 0% → 100% | 138.75d → none | constraint start no earlier than 2025-05-26 08:00 → start no earlier than 2025-06-02 08:00; baseline start 2025-05-26 08:00 → 2025-06-02 08:00; baseline finish 2025-05-26 09:00 → 2025-06-02 09:00 |
| 9 | Editorial staff meeting 8 | 2025-06-02 08:00 → 2025-06-09 08:00 A (+7d) | 2025-06-02 09:00 → 2025-06-09 09:00 (+7d) |  | 0% → 2% | 133.75d → 128.88d | constraint start no earlier than 2025-06-02 08:00 → start no earlier than 2025-06-09 08:00; baseline start 2025-06-02 08:00 → 2025-06-09 08:00; baseline finish 2025-06-02 09:00 → 2025-06-09 09:00 |
| 10 | Editorial staff meeting 9 | 2025-06-09 08:00 → 2025-06-16 08:00 (+7d) | 2025-06-09 09:00 → 2025-06-16 09:00 (+7d) |  |  | 128.75d → 123.88d | constraint start no earlier than 2025-06-09 08:00 → start no earlier than 2025-06-16 08:00; baseline start 2025-06-09 08:00 → 2025-06-16 08:00; baseline finish 2025-06-09 09:00 → 2025-06-16 09:00 |
| 11 | Editorial staff meeting 10 | 2025-06-16 08:00 → 2025-06-23 08:00 (+7d) | 2025-06-16 09:00 → 2025-06-23 09:00 (+7d) |  |  | 123.75d → 118.88d | constraint start no earlier than 2025-06-16 08:00 → start no earlier than 2025-06-23 08:00; baseline start 2025-06-16 08:00 → 2025-06-23 08:00; baseline finish 2025-06-16 09:00 → 2025-06-23 09:00 |
| 12 | Editorial staff meeting 11 | 2025-06-23 08:00 → 2025-06-30 08:00 (+7d) | 2025-06-23 09:00 → 2025-06-30 09:00 (+7d) |  |  | 118.75d → 113.88d | constraint start no earlier than 2025-06-23 08:00 → start no earlier than 2025-06-30 08:00; baseline start 2025-06-23 08:00 → 2025-06-30 08:00; baseline finish 2025-06-23 09:00 → 2025-06-30 09:00 |
| 13 | Editorial staff meeting 12 | 2025-06-30 08:00 → 2025-07-07 08:00 (+7d) | 2025-06-30 09:00 → 2025-07-07 09:00 (+7d) |  |  | 113.75d → 108.88d | constraint start no earlier than 2025-06-30 08:00 → start no earlier than 2025-07-07 08:00; baseline start 2025-06-30 08:00 → 2025-07-07 08:00; baseline finish 2025-06-30 09:00 → 2025-07-07 09:00 |
| 14 | Editorial staff meeting 13 | 2025-07-07 08:00 → 2025-07-14 08:00 (+7d) | 2025-07-07 09:00 → 2025-07-14 09:00 (+7d) |  |  | 108.75d → 103.88d | constraint start no earlier than 2025-07-07 08:00 → start no earlier than 2025-07-14 08:00; baseline start 2025-07-07 08:00 → 2025-07-14 08:00; baseline finish 2025-07-07 09:00 → 2025-07-14 09:00 |
| 15 | **Acquisition** | 2025-04-14 08:00 A | 2025-06-02 12:00 → 2025-06-03 17:00 (+1d) | 35.5d → 37d | 0% → 99% | 0d → 2d | baseline finish 2025-05-26 10:00 → 2025-06-03 17:00 |
| 17 | Content edit | 2025-04-14 08:00 A | 2025-05-08 10:00 A |  | 0% → 100% | 0d → none |  |
| 18 | Original art review | 2025-05-01 10:00 A | 2025-05-15 12:00 A |  | 0% → 100% | 0d → none | baseline start none → 2025-05-01 10:00; baseline finish none → 2025-05-15 12:00 |
| 19 | Author review of content edit | 2025-05-15 13:00 A | 2025-06-02 12:00 → 2025-06-03 17:00 A (+1d) | 12d → 13.5d | 0% → 100% | 0d → none | baseline start 2025-05-08 10:00 → 2025-05-15 13:00; baseline finish 2025-05-26 10:00 → 2025-06-03 17:00 |
| 20 | Handoff to Editorial | 2025-06-02 12:00 → 2025-06-03 17:00 (+1d) | 2025-06-02 12:00 → 2025-06-03 17:00 (+1d) |  |  | 0d → 1d | baseline start 2025-05-26 10:00 → 2025-06-03 17:00; baseline finish 2025-05-26 10:00 → 2025-06-03 17:00 |
| 21 | **Editorial** | 2025-06-02 13:00 → 2025-06-04 08:00 (+2d) | 2025-07-11 14:00 → 2025-07-15 10:00 (+4d) | 29.12d → 29.25d |  | 0d → 2d | baseline start 2025-05-26 10:00 → 2025-06-04 08:00; baseline finish 2025-07-04 11:00 → 2025-07-15 10:00 |
| 22 | Organize manuscript for copyedit | 2025-06-02 13:00 → 2025-06-04 08:00 (+2d) | 2025-06-09 14:00 → 2025-06-10 17:00 (+1d) | 5.12d → 5d |  | 0d → 2d | baseline start 2025-05-26 10:00 → 2025-06-04 08:00; baseline finish 2025-06-02 11:00 → 2025-06-10 17:00 |
| 23 | Copyedit | 2025-06-09 14:00 → 2025-06-11 08:00 (+2d) | 2025-06-24 16:00 → 2025-06-26 12:00 (+2d) | 11.25d → 11.5d |  | 0d → 2d | baseline start 2025-06-02 11:00 → 2025-06-11 08:00; baseline finish 2025-06-17 14:00 → 2025-06-26 12:00 |
| 24 | Author review of copyedit | 2025-06-24 16:00 → 2025-06-26 13:00 (+2d) | 2025-07-08 16:00 → 2025-07-10 12:00 (+2d) |  |  | 0d → 2d | baseline start 2025-06-17 14:00 → 2025-06-26 13:00; baseline finish 2025-07-01 14:00 → 2025-07-10 12:00 |
| 25 | Copyedit incorp | 2025-07-04 11:00 → 2025-07-08 08:00 (+4d) | 2025-07-11 14:00 → 2025-07-15 10:00 (+4d) |  |  | 0d → 2d | baseline start 2025-06-27 09:00 → 2025-07-08 08:00; baseline finish 2025-07-04 11:00 → 2025-07-15 10:00 |
| 26 | Handoff to Production | 2025-07-11 14:00 → 2025-07-15 10:00 (+4d) | 2025-07-11 14:00 → 2025-07-15 10:00 (+4d) |  |  | 0d → 2d | baseline start 2025-07-04 11:00 → 2025-07-15 10:00; baseline finish 2025-07-04 11:00 → 2025-07-15 10:00 |
| 27 | **Design and Production** | 2025-07-11 14:00 → 2025-07-15 10:00 (+4d) | 2025-10-01 16:00 → 2025-10-03 12:00 (+2d) |  |  | 0d → 0.5d | baseline start 2025-07-04 11:00 → 2025-07-15 10:00; baseline finish 2025-09-24 14:00 → 2025-10-03 12:00 |
| 28 | Set pages | 2025-07-11 14:00 → 2025-07-15 10:00 (+4d) | 2025-08-01 14:00 → 2025-08-05 10:00 (+4d) |  |  | 0d → 2d | baseline start 2025-07-04 11:00 → 2025-07-15 10:00; baseline finish 2025-07-25 11:00 → 2025-08-05 10:00 |
| 29 | Interior illustration design | 2025-07-11 14:00 → 2025-07-15 10:00 (+4d) | 2025-08-01 16:00 → 2025-08-05 12:00 (+4d) |  |  | 0d → 2d | baseline start 2025-07-04 11:00 → 2025-07-15 10:00; baseline finish 2025-07-25 14:00 → 2025-08-05 12:00 |
| 30 | **1st Pages review** | 2025-08-01 16:00 → 2025-08-05 13:00 (+4d) | 2025-09-12 16:00 → 2025-09-16 12:00 (+4d) |  |  | 0d → 2d | baseline start 2025-07-25 14:00 → 2025-08-05 13:00; baseline finish 2025-09-05 14:00 → 2025-09-16 12:00 |
| 31 | Proofread and index | 2025-08-01 16:00 → 2025-08-05 13:00 (+4d) | 2025-08-15 16:00 → 2025-08-19 12:00 (+4d) |  |  | 0d → 2d | baseline start 2025-07-25 14:00 → 2025-08-05 13:00; baseline finish 2025-08-08 14:00 → 2025-08-19 12:00 |
| 32 | Incorporate 1st Pages review | 2025-08-15 16:00 → 2025-08-19 13:00 (+4d) | 2025-08-29 16:00 → 2025-09-02 12:00 (+4d) |  |  | 0d → 2d | baseline start 2025-08-08 14:00 → 2025-08-19 13:00; baseline finish 2025-08-22 14:00 → 2025-09-02 12:00 |
| 33 | Send proofed pages to Production | 2025-08-29 16:00 → 2025-09-02 12:00 (+4d) | 2025-08-29 16:00 → 2025-09-02 12:00 (+4d) |  |  | 0d → 2d | baseline start 2025-08-22 14:00 → 2025-09-02 12:00; baseline finish 2025-08-22 14:00 → 2025-09-02 12:00 |
| 34 | Enter page corrections and index | 2025-08-29 16:00 → 2025-09-02 13:00 (+4d) | 2025-09-05 16:00 → 2025-09-09 12:00 (+4d) |  |  | 0d → 2d | baseline start 2025-08-22 14:00 → 2025-09-02 13:00; baseline finish 2025-08-29 14:00 → 2025-09-09 12:00 |
| 35 | Cover design | 2025-09-05 16:00 → 2025-09-09 13:00 (+4d) | 2025-09-12 16:00 → 2025-09-16 12:00 (+4d) |  |  | 0d → 2d | baseline start 2025-08-29 14:00 → 2025-09-09 13:00; baseline finish 2025-09-05 14:00 → 2025-09-16 12:00 |
| 36 | **2nd Pages review** | 2025-09-12 16:00 → 2025-09-16 13:00 (+4d) | 2025-10-01 16:00 → 2025-10-03 12:00 (+2d) |  |  | 0d → 0.5d | baseline start 2025-09-05 14:00 → 2025-09-16 13:00; baseline finish 2025-09-24 14:00 → 2025-10-03 12:00 |
| 37 | Proof and review | 2025-09-12 16:00 → 2025-09-16 13:00 (+4d) | 2025-09-23 11:00 → 2025-09-24 17:00 (+1d) |  |  | 0d → 2d | baseline start 2025-09-05 14:00 → 2025-09-16 13:00; baseline finish 2025-09-16 09:00 → 2025-09-24 17:00 |
| 38 | Send proofed pages to Production | 2025-09-23 11:00 → 2025-09-24 17:00 (+1d) | 2025-09-23 11:00 → 2025-09-24 17:00 (+1d) |  |  | 0d → 2d | baseline start 2025-09-16 09:00 → 2025-09-24 17:00; baseline finish 2025-09-16 09:00 → 2025-09-24 17:00 |
| 39 | Final review | 2025-09-24 16:00 → 2025-09-26 13:00 (+2d) | 2025-10-01 16:00 → 2025-10-03 12:00 (+2d) |  |  | 0d → 0.5d | resources Jane Dow; Hany Morcos [50%]; Carole Poland [50%]; Advance Proofs [20 copies] → Jane Dow; Hany Morcos [50%]; Carole Poland [50%]; Advance proofs [20 copies]; baseline start 2025-09-17 14:00 → 2025-09-26 13:00; baseline finish 2025-09-24 14:00 → 2025-10-03 12:00 |
| 40 | **Design book's companion website** | 2025-09-12 16:00 → 2025-09-16 13:00 (+4d) | 2025-09-26 16:00 → 2025-09-30 12:00 (+4d) |  |  | 3d → 3.5d | baseline start 2025-09-05 14:00 → 2025-09-16 13:00; baseline finish 2025-09-19 14:00 → 2025-09-30 12:00 |
| 41 | Create mockup | 2025-09-12 16:00 → 2025-09-16 13:00 (+4d) | 2025-09-24 16:00 → 2025-09-26 12:00 (+2d) |  |  | 3d → 3.5d | baseline start 2025-09-05 14:00 → 2025-09-16 13:00; baseline finish 2025-09-17 14:00 → 2025-09-26 12:00 |
| 42 | Review with author | 2025-09-24 16:00 → 2025-09-26 13:00 (+2d) | 2025-09-26 16:00 → 2025-09-30 12:00 (+4d) |  |  | 3d → 3.5d | baseline start 2025-09-17 14:00 → 2025-09-26 13:00; baseline finish 2025-09-19 14:00 → 2025-09-30 12:00 |
| 43 | **Color prep and printing** | 2025-10-01 16:00 → 2025-10-06 08:00 (+5d) | 2025-12-04 16:00 → 2025-12-04 17:00 | 46d → 44d |  |  | baseline start 2025-09-24 14:00 → 2025-10-06 08:00; baseline finish 2025-11-27 14:00 → 2025-12-04 17:00 |
| 44 | Send to color house | 2025-10-01 16:00 → 2025-10-06 08:00 (+5d) | 2025-10-06 16:00 → 2025-10-06 17:00 |  |  |  | baseline start 2025-09-24 14:00 → 2025-10-06 08:00; baseline finish 2025-09-29 14:00 → 2025-10-06 17:00 |
| 45 | Generate proofs | 2025-10-06 16:00 → 2025-10-07 08:00 (+1d) | 2025-10-20 16:00 → 2025-10-20 17:00 |  |  |  | baseline start 2025-09-29 14:00 → 2025-10-07 08:00; baseline finish 2025-10-13 14:00 → 2025-10-20 17:00 |
| 46 | Print and ship | 2025-10-23 16:00 → 2025-10-24 08:00 (+1d) | 2025-12-04 16:00 → 2025-12-04 17:00 |  |  |  | baseline start 2025-10-16 14:00 → 2025-10-24 08:00; baseline finish 2025-11-27 14:00 → 2025-12-04 17:00 |
| 47 | **Book launch prep** | 2025-10-06 16:00 → 2025-10-07 08:00 (+1d) | 2025-11-05 16:00 → 2025-11-05 17:00 |  |  |  | baseline start 2025-09-29 14:00 → 2025-10-07 08:00; baseline finish 2025-10-29 14:00 → 2025-11-05 17:00 |
| 48 | Launch planning | 2025-10-06 16:00 → 2025-10-07 08:00 (+1d) | 2025-10-13 16:00 → 2025-10-13 17:00 |  |  |  | baseline start 2025-09-29 14:00 → 2025-10-07 08:00; baseline finish 2025-10-06 14:00 → 2025-10-13 17:00 |
| 49 | Assign launch team members | 2025-10-13 16:00 → 2025-10-14 08:00 (+1d) | 2025-10-14 16:00 → 2025-10-14 17:00 |  |  |  | baseline start 2025-10-06 14:00 → 2025-10-14 08:00; baseline finish 2025-10-07 14:00 → 2025-10-14 17:00 |
| 50 | Complete author questionnaire | 2025-10-14 16:00 → 2025-10-15 08:00 (+1d) | 2025-10-21 16:00 → 2025-10-21 17:00 |  |  |  | baseline start 2025-10-07 14:00 → 2025-10-15 08:00; baseline finish 2025-10-14 14:00 → 2025-10-21 17:00 |
| 51 | Schedule author interviews | 2025-10-21 16:00 → 2025-10-22 08:00 (+1d) | 2025-10-22 16:00 → 2025-10-22 17:00 |  |  |  | baseline start 2025-10-14 14:00 → 2025-10-22 08:00; baseline finish 2025-10-15 14:00 → 2025-10-22 17:00 |
| 52 | Design and order marketing material | 2025-10-22 16:00 → 2025-10-23 08:00 (+1d) | 2025-11-05 16:00 → 2025-11-05 17:00 |  |  |  | baseline start 2025-10-15 14:00 → 2025-10-23 08:00; baseline finish 2025-10-29 14:00 → 2025-11-05 17:00 |

## Version 4 (saved 2021-07-19, file RescheduleIncompleteWork.mpp)

Note of the change: README actualizado, companion files añadido

Last finish stays 2025-12-04. Complete tasks 10 → 25.

Changed:

| ID | Task | Start | Finish | Complete | Total float |
| --- | --- | --- | --- | --- | --- |
| 1 | **Editorial staff meeting** |  | 2025-07-14 09:00 A | 54% → 100% | 103.88d → none |
| 9 | Editorial staff meeting 8 |  | 2025-06-09 09:00 A | 2% → 100% | 128.88d → none |
| 10 | Editorial staff meeting 9 | 2025-06-16 08:00 A | 2025-06-16 09:00 A | 0% → 100% | 123.88d → none |
| 11 | Editorial staff meeting 10 | 2025-06-23 08:00 A | 2025-06-23 09:00 A | 0% → 100% | 118.88d → none |
| 12 | Editorial staff meeting 11 | 2025-06-30 08:00 A | 2025-06-30 09:00 A | 0% → 100% | 113.88d → none |
| 13 | Editorial staff meeting 12 | 2025-07-07 08:00 A | 2025-07-07 09:00 A | 0% → 100% | 108.88d → none |
| 14 | Editorial staff meeting 13 | 2025-07-14 08:00 A | 2025-07-14 09:00 A | 0% → 100% | 103.88d → none |
| 15 | **Acquisition** |  | 2025-06-03 17:00 A | 99% → 100% | 2d → none |
| 16 | Manuscript received | 2025-04-14 08:00 A | 2025-04-14 08:00 A | 0% → 100% | 39d → none |
| 20 | Handoff to Editorial | 2025-06-03 17:00 A | 2025-06-03 17:00 A | 0% → 100% | 1d → none |
| 21 | **Editorial** | 2025-06-04 08:00 A | 2025-07-15 10:00 A | 0% → 100% | 2d → none |
| 22 | Organize manuscript for copyedit | 2025-06-04 08:00 A | 2025-06-10 17:00 A | 0% → 100% | 2d → none |
| 23 | Copyedit | 2025-06-11 08:00 A | 2025-06-26 12:00 A | 0% → 100% | 2d → none |
| 24 | Author review of copyedit | 2025-06-26 13:00 A | 2025-07-10 12:00 A | 0% → 100% | 2d → none |
| 25 | Copyedit incorp | 2025-07-08 08:00 A | 2025-07-15 10:00 A | 0% → 100% | 2d → none |
| 26 | Handoff to Production | 2025-07-15 10:00 A | 2025-07-15 10:00 A | 0% → 100% | 2d → none |
| 27 | **Design and Production** | 2025-07-15 10:00 A |  | 0% → 42% |  |
| 28 | Set pages | 2025-07-15 10:00 A | 2025-08-05 10:00 A | 0% → 100% | 2d → none |
| 29 | Interior illustration design | 2025-07-15 10:00 A | 2025-08-05 12:00 A | 0% → 100% | 2d → none |
| 30 | **1st Pages review** | 2025-08-05 13:00 A |  | 0% → 8% |  |
| 31 | Proofread and index | 2025-08-05 13:00 A |  | 0% → 25% |  |
